# DA - New Business Plan

Schedule from MS Project, 2023-01-17 to 2025-04-27, status date 2024-11-14, costs in $, A marks actual dates.

## Calendars

- Standard: Mon-Fri 08:00-12:00, 13:00-17:00; Sat-Sun off.

## Resources

| Resource | Rate |
| --- | --- |
| Business Advisor | 100 |
| Peers |  |
| Lawyer | 300 |
| Government Agency |  |
| Manager | 50 |
| Owners |  |
| Accountant |  |
| Banker |  |
| Information Services |  |
| Business Permit |  |

## Schedule

| ID | WBS | Task | Type | Duration | Start | Finish | Predecessors | Complete | Remaining | Baseline start | Baseline finish | Baseline duration | Total slack | Free slack | Constraint | Resources | Work | Actual work | Cost | Baseline cost | Actual cost |
| --- | --- | --- | --- | --- | --- | --- | --- | --- | --- | --- | --- | --- | --- | --- | --- | --- | --- | --- | --- | --- | --- |
| 1 | 1 | **New Business** |  | 594d | 2023-01-17 A | 2025-04-27 |  | 26% | 439.42d | 2023-01-17 | 2025-04-27 | 594d | 0d |  |  |  | 136h | 48h | 11,600 | 11,600 | 2,800 |
| 2 | 1.1 | **Phase 1 - Strategic Plan** |  | 25d | 2024-11-07 A | 2024-12-11 |  | 45% | 13.79d | 2024-11-07 | 2024-12-11 | 25d | 97d |  |  |  | 136h | 48h | 11,600 | 11,600 | 2,800 |
| 3 | 1.1.1 | Self-Assessment |  | 2d | 2024-11-07 A | 2024-11-08 A |  | 100% |  | 2024-11-07 | 2024-11-08 | 2d |  |  |  |  |  |  |  |  |  |
| 4 | 1.1.2 | Define business vision |  | 1d | 2024-11-11 A | 2024-11-11 A | 3 | 100% |  | 2024-11-11 | 2024-11-11 | 1d |  |  |  | Manager | 8h | 8h | 400 | 400 | 400 |
| 5 | 1.1.3 | Identify available skills, information and support |  | 1d | 2024-11-08 A | 2024-11-08 A | 4FS-3d | 100% |  | 2024-11-08 | 2024-11-08 | 1d |  |  |  | Business Advisor | 8h | 8h | 800 | 800 | 800 |
| 6 | 1.1.4 | Decide whether to proceed |  | 1d | 2024-11-18 A | 2024-11-18 A | 5FS+5d | 100% |  | 2024-11-18 | 2024-11-18 | 1d |  |  |  |  |  |  |  |  |  |
| 7 | 1.1.5 | **Define the Opportunity** |  | 18d | 2024-11-14 A | 2024-12-09 |  | 20% | 14.4d | 2024-11-14 | 2024-12-09 | 18d | 99d |  |  |  | 120h | 32h | 10,400 | 10,400 | 1,600 |
| 8 | 1.1.5.1 | Research the market and competition |  | 11d | 2024-11-19 | 2024-12-03 | 6 |  |  | 2024-11-19 | 2024-12-03 | 11d | 99d | 0d | finish no earlier than 2024-11-10 | Business Advisor | 88h |  | 8,800 | 8,800 |  |
| 9 | 1.1.5.2 | Interview owners of similar businesses |  | 4d | 2024-11-14 A | 2024-11-19 A |  | 100% |  | 2024-11-14 | 2024-11-19 | 4d |  |  |  | Manager | 32h | 32h | 1,600 | 1,600 | 1,600 |
| 10 | 1.1.5.3 | Identify needed resources |  | 4d | 2024-12-04 | 2024-12-09 | 8 |  |  | 2024-12-04 | 2024-12-09 | 4d | 99d |  | finish no earlier than 2024-11-21 |  |  |  |  |  |  |
| 11 | 1.1.5.4 | Identify operating cost elements |  | 1d | 2024-11-22 | 2024-11-23 | 9 |  |  | 2024-11-22 | 2024-11-23 | 1d | 110d |  | finish no earlier than 2024-11-23 |  |  |  |  |  |  |
| 12 | 1.1.6 | **Evaluate Business Approach** |  | 25d | 2024-11-07 A | 2024-12-11 A |  | 100% |  | 2024-11-07 | 2024-12-11 | 25d |  |  |  |  |  |  |  |  |  |
| 13 | 1.1.6.1 | Define new entity requirements |  | 1d | 2024-12-10 A | 2024-12-10 A | 10 | 100% |  | 2024-12-10 | 2024-12-10 | 1d |  |  |  |  |  |  |  |  |  |
| 14 | 1.1.6.2 | Identify on-going business purchase opportunities |  | 1d | 2024-11-07 A | 2024-11-07 A |  | 100% |  | 2024-11-07 | 2024-11-07 | 1d |  |  |  |  |  |  |  |  |  |
| 15 | 1.1.6.3 | Research franchise possibilities |  | 1d | 2024-12-11 A | 2024-12-11 A | 13 | 100% |  | 2024-12-11 | 2024-12-11 | 1d |  |  | start no earlier than 2024-11-28 |  |  |  |  |  |  |
| 16 | 1.1.6.4 | Summarize business approach |  | 1d | 2024-11-29 A | 2024-11-29 A | 14 | 100% |  | 2024-11-29 | 2024-11-29 | 1d |  |  | start no earlier than 2024-11-29 |  |  |  |  |  |  |
| 17 | 1.2 | **Evaluate Potential Risks and Rewards** |  | 32d | 2024-11-29 A | 2025-01-13 |  | 67% | 10.53d | 2024-11-29 | 2025-01-13 | 32d | 74d |  |  |  |  |  |  |  |  |
| 18 | 1.2.1 | Assess market size and stability |  | 4d | 2024-12-12 A | 2024-12-17 | 12 | 50% | 2d | 2024-12-12 | 2024-12-17 | 4d | 93d |  | finish no earlier than 2024-11-28 |  |  |  |  |  |  |
| 19 | 1.2.2 | Estimate the competition |  | 1d | 2024-11-29 A | 2024-11-29 |  | 50% | 0.5d | 2024-11-29 | 2024-11-29 | 1d | 0.5d | 0d | start no earlier than 2024-11-29 |  |  |  |  |  |  |
| 20 | 1.2.3 | Assess needed resource availability |  | 2d | 2024-12-18 A | 2024-12-19 A | 18 | 100% |  | 2024-12-18 | 2024-12-19 | 2d |  |  | finish no earlier than 2024-12-01 |  |  |  |  |  |  |
| 21 | 1.2.4 | Evaluate realistic initial market share |  | 1d | 2024-12-02 A | 2024-12-02 | 19 | 50% | 0.5d | 2024-12-02 | 2024-12-02 | 1d | 0.5d | 0d | start no earlier than 2024-12-02 |  |  |  |  |  |  |
| 22 | 1.2.5 | Determine financial requirements |  | 2d | 2024-12-12 A | 2024-12-13 | 15 | 50% | 1d | 2024-12-12 | 2024-12-13 | 2d | 95d |  | finish no earlier than 2024-12-01 |  |  |  |  |  |  |
| 23 | 1.2.6 | Review personal suitability |  | 1d | 2024-12-03 A | 2024-12-03 | 21 | 50% | 0.5d | 2024-12-03 | 2024-12-03 | 1d | 2.5d | 2d | start no earlier than 2024-12-02 |  |  |  |  |  |  |
| 24 | 1.2.7 | Evaluate initial profitability |  | 1d | 2024-12-05 A | 2024-12-05 |  | 50% | 0.5d | 2024-12-05 | 2024-12-05 | 1d | 101d | 1d | start no earlier than 2024-12-05 |  |  |  |  |  |  |
| 25 | 1.2.8 | Review and modify the strategic plan |  | 1d | 2024-12-06 A | 2024-12-07 | 23 | 50% | 0.5d | 2024-12-06 | 2024-12-07 | 1d | 99d | 0d | finish no earlier than 2024-12-07 |  |  |  |  |  |  |
| 26 | 1.2.9 | Confirm decision to proceed | milestone | 0d | 2024-12-07 A | 2024-12-07 | 24 | 50% | 0d | 2024-12-07 | 2024-12-07 | 0d | 100d |  | finish no earlier than 2024-12-07 |  |  |  |  |  |  |

Notes:
- 15: Get the list of possible collaborations from John.

| ID | WBS | Task | Type | Duration | Start | Finish | Predecessors | Complete | Remaining | Baseline start | Baseline finish | Baseline duration | Total slack | Free slack | Constraint |
| --- | --- | --- | --- | --- | --- | --- | --- | --- | --- | --- | --- | --- | --- | --- | --- |
| 27 | 1.2.10 | **Phase 2 - Define the Business Opportunity** |  | 26d | 2024-12-09 A | 2025-01-13 |  | 72% | 7.28d | 2024-12-09 | 2025-01-13 | 26d | 74d |  |  |
| 28 | 1.2.10.1 | **Define the Market** |  | 14d | 2024-12-09 A | 2024-12-26 |  | 85% | 2.15d | 2024-12-09 | 2024-12-26 | 14d | 86d | 14d |  |
| 29 | 1.2.10.1.1 | Access available information |  | 1d | 2024-12-09 | 2024-12-09 | 25 |  |  | 2024-12-09 | 2024-12-09 | 1d | 99d |  | finish no earlier than 2024-12-08 |
| 30 | 1.2.10.1.2 | Create market analysis plan |  | 4d | 2024-12-09 A | 2024-12-12 A |  | 100% |  | 2024-12-09 | 2024-12-12 | 4d |  |  | finish no earlier than 2024-12-12 |
| 31 | 1.2.10.1.3 | Implement market analysis plan |  | 5d | 2024-12-13 A | 2024-12-19 A | 29 | 100% |  | 2024-12-13 | 2024-12-19 | 5d |  |  | start no earlier than 2024-12-13 |
| 32 | 1.2.10.1.4 | Identify competition |  | 1d | 2024-12-20 A | 2024-12-21 A | 30 | 100% |  | 2024-12-20 | 2024-12-21 | 1d |  |  | finish no earlier than 2024-12-21 |
| 33 | 1.2.10.1.5 | Summarize the market |  | 1d | 2024-12-23 A | 2024-12-23 A | 31 | 100% |  | 2024-12-23 | 2024-12-23 | 1d |  |  | finish no earlier than 2024-12-23 |
| 34 | 1.2.10.1.6 | Identify target market niche |  | 1d | 2024-12-26 | 2024-12-26 | 32 |  |  | 2024-12-26 | 2024-12-26 | 1d | 86d |  | start no earlier than 2024-12-26 |
| 35 | 1.2.10.2 | **Identify Needed Materials and Supplies** |  | 6d | 2024-12-27 A | 2025-01-04 |  | 50% | 3d | 2024-12-27 | 2025-01-04 | 6d | 80d |  |  |
| 36 | 1.2.10.2.1 | Select a business approach (from "Evaluate Business Approach" above) |  | 1d | 2024-12-27 | 2024-12-28 | 28SS, 33 |  |  | 2024-12-27 | 2024-12-28 | 1d | 85d |  | finish no earlier than 2024-12-28 |
| 37 | 1.2.10.2.2 | Identify management staff resources |  | 1d | 2024-12-27 | 2024-12-29 |  |  |  | 2024-12-27 | 2024-12-29 | 1d | 85d |  | finish no earlier than 2024-12-29 |
| 38 | 1.2.10.2.3 | Identify staffing requirements |  | 1d | 2024-12-30 A | 2024-12-30 A | 36 | 100% |  | 2024-12-30 | 2024-12-30 | 1d |  |  | start no earlier than 2024-12-30 |
| 39 | 1.2.10.2.4 | Identify needed raw materials |  | 1d | 2025-01-02 A | 2025-01-02 A | 37 | 100% |  | 2025-01-02 | 2025-01-02 | 1d |  |  | start no earlier than 2025-01-02 |
| 40 | 1.2.10.2.5 | Identify needed utilities |  | 1d | 2025-01-03 A | 2025-01-03 A | 38 | 100% |  | 2025-01-03 | 2025-01-03 | 1d |  |  | start no earlier than 2025-01-03 |
| 41 | 1.2.10.2.6 | Summarize operating expenses and financial projections |  | 1d | 2025-01-03 | 2025-01-04 | 39 |  |  | 2025-01-03 | 2025-01-04 | 1d | 80d |  | finish no earlier than 2025-01-04 |
| 42 | 1.2.10.3 | **Evaluate Potential Risks and Rewards** |  | 6d | 2025-01-06 A | 2025-01-13 |  | 67% | 2d | 2025-01-06 | 2025-01-13 | 6d | 74d |  |  |
| 43 | 1.2.10.3.1 | Assess market size and stability |  | 1d | 2025-01-06 A | 2025-01-06 | 40 | 25% | 0.75d | 2025-01-06 | 2025-01-06 | 1d | 3.5d | 2d | finish no earlier than 2025-01-06 |
| 44 | 1.2.10.3.2 | Assess needed resources availability |  | 2d | 2025-01-09 A | 2025-01-10 |  | 75% | 0.5d | 2025-01-09 | 2025-01-10 | 2d | 0.75d | 0d | start no earlier than 2025-01-09 |
| 45 | 1.2.10.3.3 | Forecast financial returns |  | 2d | 2025-01-09 A | 2025-01-12 | 43 | 75% | 0.5d | 2025-01-09 | 2025-01-12 | 2d | 75d | 1d | finish no earlier than 2025-01-12 |
| 46 | 1.2.10.3.4 | Review and modify the business opportunity |  | 1d | 2025-01-13 A | 2025-01-13 | 44 | 75% | 0.25d | 2025-01-13 | 2025-01-13 | 1d | 71d | 0d | finish no earlier than 2025-01-13 |
| 47 | 1.2.10.3.5 | Confirm decision to proceed | milestone | 0d | 2025-01-13 | 2025-01-13 | 45 |  |  | 2025-01-13 | 2025-01-13 | 0d | 74d |  | finish no earlier than 2025-01-13 |
| 48 | 1.3 | **Phase 3 - Plan for Action** |  | 594d | 2023-01-17 A | 2025-04-27 |  | 6% | 559.73d | 2023-01-17 | 2025-04-27 | 594d | 0d |  |  |
| 49 | 1.3.1 | **Develop Detailed 5-Year Business Plan** |  | 543d | 2023-01-17 A | 2025-02-13 |  | 29% | 387.86d | 2023-01-17 | 2025-02-13 | 543d | 51d |  |  |
| 50 | 1.3.1.1 | Describe the vision and opportunity |  | 1d | 2025-01-14 | 2025-01-14 | 46 |  |  | 2025-01-14 | 2025-01-14 | 1d | 71d | 0d | finish no earlier than 2023-01-16 |
| 51 | 1.3.1.2 | List assumptions |  | 1d | 2023-01-17 | 2023-01-17 |  |  |  | 2023-01-17 | 2023-01-17 | 1d | 592d | 1d | finish no earlier than 2023-01-17 |
| 52 | 1.3.1.3 | Describe the market |  | 1d | 2025-01-15 | 2025-01-15 | 50 |  |  | 2025-01-15 | 2025-01-15 | 1d | 71d | 0d | finish no earlier than 2023-01-18 |
| 53 | 1.3.1.4 | Describe the new business |  | 1d | 2023-01-19 | 2023-01-19 | 51 |  |  | 2023-01-19 | 2023-01-19 | 1d | 591d |  | finish no earlier than 2023-01-19 |
| 54 | 1.3.1.5 | Describe strengths, weaknesses, assets and threats |  | 1d | 2025-01-16 | 2025-01-16 | 52 |  |  | 2025-01-16 | 2025-01-16 | 1d | 71d |  | finish no earlier than 2023-01-20 |
| 55 | 1.3.1.6 | Estimate sales volume during startup period |  | 1d | 2023-01-23 A | 2023-01-23 A | 53 | 100% |  | 2023-01-23 | 2023-01-23 | 1d |  |  | finish no earlier than 2023-01-23 |
| 56 | 1.3.1.7 | Forecast operating costs |  | 1d | 2025-01-17 A | 2025-01-17 A | 54 | 100% |  | 2025-01-17 | 2025-01-17 | 1d |  |  | finish no earlier than 2023-01-24 |
| 57 | 1.3.1.8 | Establish pricing strategy |  | 1d | 2023-01-25 A | 2023-01-25 A | 55 | 100% |  | 2023-01-25 | 2023-01-25 | 1d |  |  | finish no earlier than 2023-01-25 |
| 58 | 1.3.1.9 | Forecast revenue |  | 1d | 2025-01-20 A | 2025-01-20 A | 56 | 100% |  | 2025-01-20 | 2025-01-20 | 1d |  |  | finish no earlier than 2023-01-26 |
| 59 | 1.3.1.10 | Summarize pro-forma financial statement |  | 2d | 2023-01-27 A | 2023-01-30 A | 57 | 100% |  | 2023-01-27 | 2023-01-30 | 2d |  |  | finish no earlier than 2023-01-30 |
| 60 | 1.3.1.11 | Develop break-even analysis |  | 1d | 2025-01-21 | 2025-01-21 | 58 |  |  | 2025-01-21 | 2025-01-21 | 1d | 64d | 0d | finish no earlier than 2023-01-31 |
| 61 | 1.3.1.12 | Develop cash-flow projection |  | 1d | 2023-02-01 | 2023-02-01 | 59 |  |  | 2023-02-01 | 2023-02-01 | 1d | 554d | 1d | finish no earlier than 2023-02-01 |
| 62 | 1.3.1.13 | Identify licensing and permitting requirements |  | 1d | 2025-01-22 | 2025-01-22 | 60 |  |  | 2025-01-22 | 2025-01-22 | 1d | 64d | 0d | finish no earlier than 2023-02-02 |
| 63 | 1.3.1.14 | Develop startup plan |  | 2d | 2023-02-03 | 2023-02-06 | 61 |  |  | 2023-02-03 | 2023-02-06 | 2d | 553d | 1d | finish no earlier than 2023-02-06 |
| 64 | 1.3.1.15 | Develop sales and marketing strategy |  | 1d | 2025-01-23 | 2025-01-23 | 62 |  |  | 2025-01-23 | 2025-01-23 | 1d | 64d | 11d | finish no earlier than 2023-02-07 |
| 65 | 1.3.1.16 | Develop distribution structure |  | 1d | 2023-02-08 | 2023-02-08 | 63 |  |  | 2023-02-08 | 2023-02-08 | 1d | 552d | 525d | finish no earlier than 2023-02-08 |
| 66 | 1.3.1.17 | Describe risks and opportunities |  | 1d | 2025-02-10 | 2025-02-10 | 64 |  |  | 2025-02-10 | 2025-02-10 | 1d | 53d | 2d | finish no earlier than 2025-02-10 |
| 67 | 1.3.1.18 | Publish the business plan |  | 1d | 2025-02-13 | 2025-02-13 | 65 |  |  | 2025-02-13 | 2025-02-13 | 1d | 27d | 0d | start no earlier than 2025-02-13 |
| 68 | 1.3.1.19 | Confirm decision to proceed |  | 1d | 2025-02-13 | 2025-02-13 | 66 |  |  | 2025-02-13 | 2025-02-13 | 1d | 51d |  | finish no earlier than 2025-02-13 |

| ID | WBS | Task | Type | Duration | Start | Finish | Predecessors | Baseline start | Baseline finish | Baseline duration | Total slack | Free slack | Constraint |
| --- | --- | --- | --- | --- | --- | --- | --- | --- | --- | --- | --- | --- | --- |
| 69 | 1.3.2 | **Phase 4 - Proceed With Startup Plan** |  | 1d | 2025-02-14 | 2025-02-14 |  | 2025-02-14 | 2025-02-14 | 1d | 27d | 0d |  |
| 70 | 1.3.2.1 | Choose a location |  | 1d | 2025-02-14 | 2025-02-14 | 67 | 2025-02-14 | 2025-02-14 | 1d | 27d |  | start no earlier than 2025-02-14 |
| 71 | 1.3.3 | **Establish Business Structure** |  | 1d | 2025-02-17 | 2025-02-17 |  | 2025-02-17 | 2025-02-17 | 1d | 27d |  |  |
| 72 | 1.3.3.1 | **Choose a Name** |  | 1d | 2025-02-17 | 2025-02-17 | 69 | 2025-02-17 | 2025-02-17 | 1d | 27d |  |  |
| 73 | 1.3.3.1.1 | Identify implications |  | 1d | 2025-02-17 | 2025-02-17 |  | 2025-02-17 | 2025-02-17 | 1d | 27d | 0d | finish no earlier than 2025-02-15 |
| 74 | 1.3.3.1.2 | Research name availability |  | 1d | 2025-02-17 | 2025-02-17 |  | 2025-02-17 | 2025-02-17 | 1d | 49d |  | finish no earlier than 2025-02-16 |
| 75 | 1.3.4 | **Choose a Bank** |  | 9d | 2025-02-18 | 2025-03-02 |  | 2025-02-18 | 2025-03-02 | 9d | 16d |  |  |
| 76 | 1.3.4.1 | Establish accounts |  | 5d | 2025-02-18 | 2025-02-24 | 73 | 2025-02-18 | 2025-02-24 | 5d | 27d | 0d | finish no earlier than 2025-02-22 |
| 77 | 1.3.4.2 | Establish line of credit |  | 1d | 2025-02-21 | 2025-02-23 |  | 2025-02-21 | 2025-02-23 | 1d | 13d | 3d | finish no earlier than 2025-02-23 |
| 78 | 1.3.4.3 | Choose legal representation |  | 1d | 2025-02-25 | 2025-02-25 | 76 | 2025-02-25 | 2025-02-25 | 1d | 27d | 1d | start no earlier than 2025-02-24 |
| 79 | 1.3.4.4 | Select business tax-basis category |  | 2d | 2025-02-27 | 2025-02-28 | 77 | 2025-02-27 | 2025-02-28 | 2d | 10d | 0d | start no earlier than 2025-02-27 |
| 80 | 1.3.4.5 | Choose capital funding source |  | 2d | 2025-02-27 | 2025-03-02 | 78 | 2025-02-27 | 2025-03-02 | 2d | 26d | 0d | finish no earlier than 2025-03-02 |
| 81 | 1.3.4.6 | Commit capital funding | milestone | 0d | 2025-03-02 | 2025-03-02 | 79 | 2025-03-02 | 2025-03-02 | 0d | 40d |  | finish no earlier than 2025-03-02 |
| 82 | 1.3.5 | **Establish the Operating Control Base** |  | 14d | 2025-03-03 | 2025-03-20 |  | 2025-03-03 | 2025-03-20 | 14d | 26d |  |  |
| 83 | 1.3.5.1 | Choose and set up the accounting system |  | 4d | 2025-03-03 | 2025-03-06 | 79, 80 | 2025-03-03 | 2025-03-06 | 4d | 26d | 4d | finish no earlier than 2025-03-06 |
| 84 | 1.3.5.2 | Obtain required licenses and permits |  | 2d | 2025-03-07 | 2025-03-10 |  | 2025-03-07 | 2025-03-10 | 2d | 30d | 4d | finish no earlier than 2025-03-10 |
| 85 | 1.3.5.3 | Obtain needed insurance |  | 2d | 2025-03-13 | 2025-03-16 | 83 | 2025-03-13 | 2025-03-16 | 2d | 22d | 4d | finish no earlier than 2025-03-16 |
| 86 | 1.3.5.4 | Establish security plan |  | 4d | 2025-03-17 | 2025-03-20 | 84 | 2025-03-17 | 2025-03-20 | 4d | 26d |  | finish no earlier than 2025-03-20 |
| 87 | 1.3.6 | **Develop Marketing Program** |  | 5d | 2025-02-17 | 2025-02-21 |  | 2025-02-17 | 2025-02-21 | 5d | 41d |  |  |
| 88 | 1.3.6.1 | Establish an advertising program |  | 1d | 2025-02-17 | 2025-02-17 | 73SS | 2025-02-17 | 2025-02-17 | 1d | 48d | 3d | finish no earlier than 2025-02-17 |
| 89 | 1.3.6.2 | Develop a logo |  | 1d | 2025-02-20 | 2025-02-20 |  | 2025-02-20 | 2025-02-20 | 1d | 38d | 20d | start no earlier than 2025-02-20 |
| 90 | 1.3.6.3 | Order promotional materials |  | 1d | 2025-02-21 | 2025-02-21 | 88 | 2025-02-21 | 2025-02-21 | 1d | 45d |  | start no earlier than 2025-02-21 |
| 91 | 1.3.7 | **Provide Physical Facilities** |  | 15d | 2025-03-21 | 2025-04-10 |  | 2025-03-21 | 2025-04-10 | 15d | 11d |  |  |
| 92 | 1.3.7.1 | Secure operation space |  | 5d | 2025-03-21 | 2025-03-27 | 85, 89 | 2025-03-21 | 2025-03-27 | 5d | 18d | 0d | start no earlier than 2025-03-21 |
| 93 | 1.3.7.2 | Select computer network hardware |  | 1d | 2025-03-28 | 2025-03-28 |  | 2025-03-28 | 2025-03-28 | 1d | 15d | 0d | start no earlier than 2025-03-28 |
| 94 | 1.3.7.3 | Select computer software |  | 1d | 2025-03-28 | 2025-03-29 | 92 | 2025-03-28 | 2025-03-29 | 1d | 18d | 4d | finish no earlier than 2025-03-29 |
| 95 | 1.3.7.4 | Establish utilities |  | 4d | 2025-03-31 | 2025-04-03 | 93 | 2025-03-31 | 2025-04-03 | 4d | 15d | 4d | finish no earlier than 2025-04-03 |
| 96 | 1.3.7.5 | Provide furniture and equipment |  | 2d | 2025-04-04 | 2025-04-07 | 94 | 2025-04-04 | 2025-04-07 | 2d | 14d |  | finish no earlier than 2025-04-07 |
| 97 | 1.3.7.6 | Move in |  | 1d | 2025-04-10 | 2025-04-10 | 95 | 2025-04-10 | 2025-04-10 | 1d | 11d |  | start no earlier than 2025-04-10 |

| ID | WBS | Task | Type | Duration | Start | Finish | Predecessors | Baseline start | Baseline finish | Baseline duration | Total slack | Constraint |
| --- | --- | --- | --- | --- | --- | --- | --- | --- | --- | --- | --- | --- |
| 98 | 1.3.8 | **Provide Staffing** |  | 40d | 2025-03-03 | 2025-04-27 |  | 2025-03-03 | 2025-04-27 | 40d | 0d |  |
| 99 | 1.3.8.1 | Interview and test candidates |  | 15d | 2025-03-03 | 2025-03-22 | 79 | 2025-03-03 | 2025-03-22 | 15d | 10d | finish no earlier than 2025-03-22 |
| 100 | 1.3.8.2 | Hire staff |  | 10d | 2025-03-24 | 2025-04-05 |  | 2025-03-24 | 2025-04-05 | 10d | 15d | finish no earlier than 2025-04-05 |
| 101 | 1.3.8.3 | Train staff |  | 15d | 2025-04-07 | 2025-04-27 | 99 | 2025-04-07 | 2025-04-27 | 15d | 0d | finish no earlier than 2025-04-27 |
| 102 | 1.3.8.4 | Start up the business | milestone | 0d | 2025-04-27 | 2025-04-27 | 96, 100 | 2025-04-27 | 2025-04-27 | 0d | 0d | finish no earlier than 2025-04-27 |
